# H-项目计划书v1.1

Schedule from MS Project, 2016-03-15 to 2016-06-11, 3 hours a day, A marks actual dates.
Microsoft

## Calendars

- 标准: Mon-Sun 08:00-11:00.

## Resources

| Resource |
| --- |
| 周晓懿 |
| 顾泽鹏 |
| 杨帆 |
| 滕延林 |
| 刘宏宇 |

## Schedule

| ID | WBS | Task | Type | Duration | Start | Finish | Predecessors | Complete | Actual finish | Baseline start | Baseline finish | Baseline duration | Baseline 1 start | Baseline 1 finish | Resources | Work | Actual work |
| --- | --- | --- | --- | --- | --- | --- | --- | --- | --- | --- | --- | --- | --- | --- | --- | --- | --- |
| 1 | 1 | **软件需求分析** |  | 7d | 2016-03-15 A | 2016-03-23 A |  | 100% |  | 2016-03-15 | 2016-03-23 | 7d | 2016-03-15 | 2016-03-25 |  | 21.68h | 21.68h |
| 2 | 1.1 | 开会确定目标及需求 | manual | 2d | 2016-03-15 A | 2016-03-16 A |  | 100% |  | 2016-03-15 | 2016-03-16 | 2d | 2016-03-15 | 2016-03-16 | 顾泽鹏; 刘宏宇; 滕延林; 杨帆 | 4.8h | 4.8h |
| 3 | 1.2 | 资料收集 | manual | 2d | 2016-03-17 A | 2016-03-18 A | 2 | 100% |  | 2016-03-17 | 2016-03-18 | 2d | 2016-03-17 | 2016-03-18 | 刘宏宇; 顾泽鹏 | 6h | 6h |
| 4 | 1.3 | 撰写需求说明书 | manual | 1d | 2016-03-17 A | 2016-03-17 A | 2 | 100% |  | 2016-03-17 | 2016-03-17 | 1d | 2016-03-17 | 2016-03-17 | 滕延林; 杨帆; 刘宏宇 | 9h | 9h |
| 5 | 1.4 | 讨论，总结及完善 | manual | 1d | 2016-03-21 A | 2016-03-23 A |  | 100% |  | 2016-03-21 | 2016-03-23 | 1d | 2016-03-21 | 2016-03-23 | 顾泽鹏; 滕延林; 杨帆; 刘宏宇 | 1.88h | 1.88h |
| 6 | 2 | **软件需求评审** |  | 17d | 2016-03-21 A | 2016-04-06 |  | 100% | 2016-04-05 | 2016-03-21 | 2016-04-06 | 17d | 2016-03-26 | 2016-04-13 |  | 51h | 51h |
| 7 | 2.1 | 准备软件评审 | manual | 3d | 2016-03-21 A | 2016-03-23 A |  | 100% |  | 2016-03-21 | 2016-03-23 | 3d | 2016-03-21 | 2016-03-23 | 顾泽鹏; 刘宏宇 | 15h | 15h |
| 8 | 2.2 | 参与评审 | manual | 2d | 2016-03-24 A | 2016-03-25 A | 7 | 100% |  | 2016-03-24 | 2016-03-25 | 2d | 2016-03-24 | 2016-03-25 | 滕延林; 杨帆 | 12h | 12h |
| 9 | 2.3 | 需求互评 | manual | 3d | 2016-04-02 A | 2016-04-05 A |  | 100% |  | 2016-04-02 | 2016-04-05 | 3d | 2016-04-02 | 2016-04-05 | 杨帆; 刘宏宇 | 18h | 18h |
| 10 | 2.4 | 撰写报告 | manual | 1d | 2016-03-28 A | 2016-03-29 A | 8 | 100% |  | 2016-03-28 | 2016-03-29 | 1d | 2016-03-28 | 2016-03-29 | 滕延林; 杨帆 | 6h | 6h |
| 11 | 3 | **软件需求复评审** |  | 9d | 2016-04-07 A | 2016-04-15 A |  | 100% |  | 2016-04-07 | 2016-04-15 | 9d | 2016-04-14 | 2016-04-17 |  | 63h | 63h |
| 12 | 3.1 | 开会讨论，根据评审进行改正 | manual | 4d | 2016-04-07 A | 2016-04-10 A |  | 100% |  | 2016-04-07 | 2016-04-13 | 7d | 2016-04-07 | 2016-04-13 | 顾泽鹏; 刘宏宇; 滕延林; 杨帆; 周晓懿 | 51h | 51h |
| 13 | 3.2 | 撰写报告 | manual | 2d | 2016-04-14 A | 2016-04-15 A | 12 | 100% |  | 2016-04-14 | 2016-04-15 | 2d | 2016-04-14 | 2016-04-15 | 顾泽鹏; 刘宏宇 | 12h | 12h |
| 15 | 4 | **工作进度计划** |  | 2d | 2016-04-16 A | 2016-04-17 A |  | 100% |  | 2016-04-16 | 2016-04-17 | 2d | 2016-04-18 | 2016-04-21 |  | 15h | 15h |
| 16 | 4.1 | 进度检查与分析 | manual | 1d | 2016-04-16 A | 2016-04-16 A | 13 | 100% |  | 2016-04-16 | 2016-04-16 | 1d | 2016-04-16 | 2016-04-16 | 滕延林 | 3h | 3h |
| 17 | 4.2 | 任务量统计 | manual | 1d | 2016-04-16 A | 2016-04-16 A |  | 100% |  | 2016-04-16 | 2016-04-16 | 1d | 2016-04-16 | 2016-04-16 | 顾泽鹏; 刘宏宇 | 6h | 6h |
| 18 | 4.3 | 调整分析报告 | manual | 1d | 2016-04-17 A | 2016-04-17 A | 17 | 100% |  | 2016-04-17 | 2016-04-17 | 1d | 2016-04-17 | 2016-04-17 | 杨帆; 周晓懿 | 6h | 6h |
| 20 | 5 | **改进设计方案** |  | 3d | 2016-04-18 A | 2016-04-20 A |  | 100% |  | 2016-04-18 | 2016-04-20 | 3d | 2016-04-22 | 2016-04-23 |  | 12h | 12h |
| 21 | 5.1 | 讨论并调整需求 | manual | 1d | 2016-04-18 A | 2016-04-18 A | 18 | 100% |  | 2016-04-18 | 2016-04-18 | 1d | 2016-04-18 | 2016-04-18 | 刘宏宇; 周晓懿 | 3h | 3h |
| 22 | 5.2 | 方案设计 | manual | 1d | 2016-04-19 A | 2016-04-19 A | 21 | 100% |  | 2016-04-19 | 2016-04-19 | 1d | 2016-04-19 | 2016-04-19 | 杨帆; 刘宏宇; 周晓懿 | 6h | 6h |
| 23 | 5.3 | ppt设计 | manual | 1d | 2016-04-20 A | 2016-04-20 A |  | 100% |  | 2016-04-20 | 2016-04-20 | 1d | 2016-04-20 | 2016-04-20 | 刘宏宇; 周晓懿 | 3h | 3h |
| 24 | 6 | **基本框架搭建** |  | 4d | 2016-04-17 A | 2016-04-20 A |  | 100% |  | 2016-04-17 | 2016-04-20 | 4d | 2016-04-24 | 2016-04-27 |  | 23.4h | 23.4h |
| 25 | 6.1 | 代码阅读 | manual | 1.27d | 2016-04-17 A | 2016-04-18 A |  | 100% |  | 2016-04-17 | 2016-04-17 | 1d | 2016-04-17 | 2016-04-17 | 滕延林; 顾泽鹏 | 6h | 6h |
| 26 | 6.2 | 文本输入 | manual | 1.5d | 2016-04-18 A | 2016-04-19 A | 25 | 100% |  | 2016-04-18 | 2016-04-19 | 1.5d | 2016-04-18 | 2016-04-19 | 滕延林; 顾泽鹏 | 9h | 9h |
| 27 | 6.3 | 文本检索 | manual | 2d | 2016-04-19 A | 2016-04-20 A | 26 | 100% |  | 2016-04-19 | 2016-04-20 | 2d | 2016-04-19 | 2016-04-20 | 顾泽鹏; 滕延林 | 8.4h | 8.4h |

| ID | WBS | Task | Type | Duration | Start | Finish | Predecessors | Complete | Actual start | Actual finish | Baseline start | Baseline finish | Baseline duration | Baseline 1 start | Baseline 1 finish | Resources | Work | Actual work |
| --- | --- | --- | --- | --- | --- | --- | --- | --- | --- | --- | --- | --- | --- | --- | --- | --- | --- | --- |
| 29 | 7 | **扩展功能实现** |  | 8d | 2016-04-21 A | 2016-04-28 |  | 100% |  | 2016-04-26 | 2016-04-21 | 2016-04-28 | 8d | 2016-04-28 | 2016-05-01 |  | 60h | 60h |
| 30 | 7.1 | 中文分词 | manual | 6d | 2016-04-21 A | 2016-04-26 A |  | 100% |  |  | 2016-04-21 | 2016-04-24 | 4d | 2016-04-21 | 2016-04-24 | 顾泽鹏; 杨帆; 周晓懿 | 36h | 36h |
| 31 | 7.2 | 图像检索 | manual | 4d | 2016-04-21 A | 2016-04-24 A |  | 100% |  |  | 2016-04-21 | 2016-04-24 | 4d | 2016-04-21 | 2016-04-24 | 滕延林; 刘宏宇 | 24h | 24h |
| 33 | 8 | **性能优化** |  | 7d | 2016-04-29 A | 2016-05-05 |  | 100% |  | 2016-05-06 | 2016-04-29 | 2016-05-05 | 7d | 2016-05-02 | 2016-05-07 |  | 66h | 66h |
| 34 | 8.1 | 讨论，确定具体实施方案 | manual | 2d | 2016-04-29 A | 2016-04-30 A |  | 100% |  |  | 2016-04-29 | 2016-04-30 | 2d | 2016-04-29 | 2016-04-30 | 顾泽鹏; 滕延林; 刘宏宇 | 18h | 18h |
| 35 | 8.2 | 编码 | manual | 5.33d | 2016-05-01 A | 2016-05-06 A | 34 | 100% |  |  | 2016-05-01 | 2016-05-02 | 2d | 2016-05-01 | 2016-05-02 | 顾泽鹏; 刘宏宇; 滕延林 | 48h | 48h |
| 37 | 9 | **软件测试分析** |  | 7d | 2016-05-06 | 2016-05-12 A |  | 100% | 2016-05-07 |  | 2016-05-06 | 2016-05-12 | 7d | 2016-05-08 | 2016-05-10 |  | 54h | 54h |
| 38 | 9.1 | 学习测试工具 | manual | 2d | 2016-05-07 A | 2016-05-08 A |  | 100% |  |  | 2016-05-07 | 2016-05-08 | 2d | 2016-05-07 | 2016-05-08 | 顾泽鹏; 周晓懿 | 12h | 12h |
| 39 | 9.2 | 测试需求分析 | manual | 1d | 2016-05-09 A | 2016-05-09 A |  | 100% |  |  | 2016-05-09 | 2016-05-09 | 1d | 2016-05-09 | 2016-05-09 | 滕延林; 周晓懿 | 6h | 6h |
| 40 | 9.3 | 确定测试用例 | manual | 3d | 2016-05-10 A | 2016-05-12 A | 39 | 100% |  |  | 2016-05-10 | 2016-05-12 | 3d | 2016-05-10 | 2016-05-12 | 顾泽鹏; 刘宏宇; 滕延林; 杨帆; 周晓懿 | 36h | 36h |
| 42 | 10 | **软件测试复评审** |  | 8d | 2016-05-13 A | 2016-05-20 A |  | 100% |  |  | 2016-05-13 | 2016-05-20 | 8d | 2016-05-11 | 2016-05-13 |  | 36h | 36h |
| 43 | 10.1 | 参与评审 | manual | 1d | 2016-05-13 A | 2016-05-13 A |  | 100% |  |  | 2016-05-13 | 2016-05-18 | 6d | 2016-05-13 | 2016-05-18 | 顾泽鹏; 刘宏宇; 滕延林; 杨帆; 周晓懿 | 12h | 12h |
| 44 | 10.2 | 测试需求和测试用例评审 | manual | 1d | 2016-05-19 A | 2016-05-19 A |  | 100% |  |  | 2016-05-19 | 2016-05-19 | 1d | 2016-05-19 | 2016-05-19 | 顾泽鹏; 刘宏宇; 滕延林; 杨帆; 周晓懿 | 12h | 12h |
| 45 | 10.3 | 测试分析修改 | manual | 1d | 2016-05-20 A | 2016-05-20 A | 44 | 100% |  |  | 2016-05-20 | 2016-05-20 | 1d | 2016-05-20 | 2016-05-20 | 滕延林; 杨帆; 刘宏宇; 顾泽鹏; 周晓懿 | 12h | 12h |
| 47 | 11 | **软件测试** |  | 7d | 2016-05-21 A | 2016-05-27 |  | 100% |  | 2016-05-26 | 2016-05-21 | 2016-05-27 | 7d | 2016-05-14 | 2016-05-28 |  | 57h | 57h |
| 48 | 11.1 | 基本功能测试 | manual | 3d | 2016-05-21 A | 2016-05-23 A |  | 100% |  |  | 2016-05-21 | 2016-05-25 | 5d | 2016-05-21 | 2016-05-25 | 杨帆; 周晓懿 | 18h | 18h |
| 49 | 11.2 | 扩展功能测试 | manual | 3d | 2016-05-21 A | 2016-05-23 A |  | 100% |  |  | 2016-05-21 | 2016-05-25 | 5d | 2016-05-21 | 2016-05-25 | 刘宏宇; 顾泽鹏 | 18h | 18h |
| 50 | 11.3 | 性能优化测试 | manual | 3d | 2016-05-21 A | 2016-05-23 A |  | 100% |  |  | 2016-05-21 | 2016-05-25 | 5d | 2016-05-21 | 2016-05-25 | 滕延林 | 9h | 9h |
| 51 | 11.4 | 测试报告撰写 | manual | 1d | 2016-05-26 A | 2016-05-26 A |  | 100% |  |  | 2016-05-26 | 2016-05-27 | 2d | 2016-05-26 | 2016-05-27 | 杨帆; 刘宏宇; 顾泽鹏; 滕延林; 周晓懿 | 12h | 12h |
| 53 | 12 | **综合实验分析** |  | 6d | 2016-05-28 A | 2016-06-02 |  | 100% |  | 2016-05-30 | 2016-05-28 | 2016-06-02 | 6d | 2016-05-29 | 2016-06-02 |  | 36h | 36h |
| 54 | 12.1 | 计划管理报告撰写 | manual | 3d | 2016-05-28 A | 2016-05-30 A |  | 100% |  |  | 2016-05-28 | 2016-06-01 | 5d | 2016-05-28 | 2016-06-01 | 杨帆; 滕延林; 周晓懿 | 18h | 18h |
| 55 | 12.2 | 配置管理报告撰写 | manual | 3d | 2016-05-28 A | 2016-05-30 A |  | 100% |  |  | 2016-05-28 | 2016-06-01 | 5d | 2016-05-28 | 2016-06-01 | 刘宏宇; 顾泽鹏 | 18h | 18h |
| 57 | 13 | **综合实验总结** |  | 8d | 2016-06-04 A | 2016-06-11 |  | 100% |  | 2016-06-05 | 2016-06-04 | 2016-06-11 | 8d | 2016-06-06 | 2016-06-14 |  | 24h | 24h |
| 58 | 13.1 | 人员工作量统计 | manual | 2d | 2016-06-04 A | 2016-06-05 A |  | 100% |  |  | 2016-06-04 | 2016-06-11 | 8d | 2016-06-04 | 2016-06-11 | 滕延林; 杨帆; 周晓懿 | 12h | 12h |
| 59 | 13.2 | 工作量统计分析 | manual | 2d | 2016-06-04 A | 2016-06-05 A |  | 100% |  |  | 2016-06-04 | 2016-06-11 | 8d | 2016-06-04 | 2016-06-11 | 刘宏宇; 顾泽鹏 | 12h | 12h |
